# Velomobile

Schedule from MS Project, 2010-01-04 to 2010-06-04, status date 2010-01-12, A marks actual dates.
Oregon Institute of Technology

## Calendars

- Standard: Mon-Fri 08:00-12:00, 13:00-17:00; Sat-Sun off.

## Resources

| Resource |
| --- |
| Shawn |
| John |
| Dan |

## Schedule

| ID | WBS | Task | Type | Duration | Start | Finish | Predecessors | Complete | Remaining | Total slack | Free slack | Constraint | Resources | Work | Actual work |
| --- | --- | --- | --- | --- | --- | --- | --- | --- | --- | --- | --- | --- | --- | --- | --- |
| 1 | 1 | Winter Term | milestone | 55d? | 2010-02-03 | 2010-04-20 |  |  |  | 33d |  | start no earlier than 2010-02-02 |  |  |  |
| 2 | 2 | Spring Term | milestone | 50d? | 2010-03-29 | 2010-06-04 |  |  |  | 0d |  | start no earlier than 2010-03-29 |  |  |  |
| 3 | 3 | **Embedded Controller** |  | 61d? | 2010-01-04 A | 2010-03-29 |  | 26% | 45.36d? | 49d |  |  |  | 624h | 160h |
| 4 | 3.1 | **Build** |  | 52.4d? | 2010-01-04 A | 2010-03-17 |  | 63% | 19.31d? | 57.6d |  |  |  | 152h | 96h |
| 5 | 3.1.1 | Research Components |  | 1d | 2010-01-04 A | 2010-01-04 A |  | 100% |  |  |  | start no earlier than 2010-01-04 | Shawn | 8h | 8h |
| 6 | 3.1.2 | Submit Component List for Review |  | 1d? | 2010-01-05 A | 2010-01-05 A | 5 | 100% |  |  |  |  | Shawn | 8h | 8h |
| 7 | 3.1.3 | Aquire Components |  | 7d? | 2010-01-06 A | 2010-02-04 A | 6 | 100% |  |  |  |  | Shawn | 56h | 56h |
| 8 | 3.1.4 | Interface Display |  | 2d | 2010-03-10 | 2010-03-12 | 7 |  |  | 60.6d |  | finish no earlier than 2010-01-15 | Shawn | 16h |  |
| 9 | 3.1.5 | Interface Bluetooth |  | 1d | 2010-01-18 A | 2010-01-18 A | 7 | 100% |  |  |  |  | Shawn | 8h | 8h |
| 10 | 3.1.6 | Interface GPS |  | 1d | 2010-03-16 A | 2010-03-17 A | 7 | 100% |  |  |  |  | Shawn | 8h | 8h |
| 11 | 3.1.7 | Interface Camera |  | 1d | 2010-01-15 A | 2010-01-15 A | 7 | 100% |  |  |  |  | Shawn | 8h | 8h |
| 12 | 3.1.8 | Interface Hall Effect |  | 1d | 2010-02-12 | 2010-02-15 | 7 |  |  | 64d | 0d | start no earlier than 2010-02-02 | Shawn | 8h |  |
| 13 | 3.1.9 | Interface AttoPilot |  | 1d | 2010-02-04 | 2010-02-05 | 7 |  |  | 64d | 0d | start no earlier than 2010-02-02 | Shawn | 8h |  |
| 14 | 3.1.10 | Interface Throttle |  | 1d | 2010-02-18 | 2010-02-19 | 7 |  |  | 52d | 0d | start no earlier than 2010-02-02 | Shawn | 8h |  |
| 15 | 3.1.11 | Interface PAS Sensor |  | 1d | 2010-02-19 | 2010-02-22 | 7 |  |  | 51d | 0d | start no earlier than 2010-02-02 | Shawn | 8h |  |
| 16 | 3.1.12 | Interface Brake Sensor |  | 1d | 2010-02-23 | 2010-02-24 | 7 |  |  | 49d | 0d |  | Shawn | 8h |  |
| 17 | 3.2 | **Code** |  | 39d | 2010-02-03 A | 2010-03-29 |  | 14% | 33.71d | 49d |  |  |  | 472h | 64h |
| 18 | 3.2.1 | **Sensor Input** |  | 26d | 2010-02-10 | 2010-03-17 |  |  |  | 57d |  |  |  | 48h |  |
| 19 | 3.2.1.1 | Revolutions |  | 2d | 2010-02-15 | 2010-02-17 | 12 |  |  | 64d | 0d | start no earlier than 2010-02-02 | John | 16h |  |
| 20 | 3.2.1.2 | Battery Levels |  | 2d | 2010-02-10 | 2010-02-11 | 13 |  |  | 64d | 0d | start no earlier than 2010-02-02 | John | 16h |  |
| 21 | 3.2.1.3 | Throttle Position |  | 2d | 2010-03-16 | 2010-03-17 | 14 |  |  | 57d |  |  | John | 16h |  |
| 22 | 3.2.2 | **Calculations** |  | 17d | 2010-02-12 | 2010-03-08 |  |  |  | 64d |  |  |  | 80h |  |
| 23 | 3.2.2.1 | Velocity |  | 2d | 2010-02-17 | 2010-02-19 | 19 |  |  | 65.6d | 0d | start no earlier than 2010-02-02 | John | 16h |  |
| 24 | 3.2.2.2 | RPM |  | 3d | 2010-03-04 | 2010-03-08 | 19 |  |  | 64d |  |  | John | 24h |  |
| 25 | 3.2.2.3 | Battery Life |  | 5d | 2010-02-12 | 2010-02-24 | 20 |  |  | 69d | 0d | start no earlier than 2010-02-02 | John | 40h |  |

| ID | WBS | Task | Duration | Start | Finish | Predecessors | Complete | Remaining | Total slack | Free slack | Constraint | Resources | Work | Actual work |
| --- | --- | --- | --- | --- | --- | --- | --- | --- | --- | --- | --- | --- | --- | --- |
| 26 | 3.2.3 | **Power Assist Control** | 15d | 2010-03-09 | 2010-03-29 |  |  |  | 49d |  |  |  | 72h |  |
| 27 | 3.2.3.1 | Accelerate | 2d | 2010-03-18 | 2010-03-25 | 14, 15 |  |  | 51d |  |  | John | 16h |  |
| 28 | 3.2.3.2 | Decelerate | 2d | 2010-03-26 | 2010-03-29 | 16, 15, 14 |  |  | 49d |  |  | John | 16h |  |
| 29 | 3.2.3.3 | Cruise Control | 5d | 2010-03-09 | 2010-03-15 | 16, 15, 14 |  |  | 59d |  |  | John | 40h |  |
| 30 | 3.2.4 | **Embedded Display** | 9d | 2010-02-24 | 2010-03-09 |  |  |  | 63.6d |  |  |  | 72h |  |
| 31 | 3.2.4.1 | Display Velocity | 3d | 2010-02-24 | 2010-03-04 | 23 |  |  | 66.6d |  |  | Shawn | 24h |  |
| 32 | 3.2.4.2 | Display Battery Level | 3d | 2010-03-04 | 2010-03-09 | 20 |  |  | 63.6d |  |  | Shawn | 24h |  |
| 33 | 3.2.4.3 | Display Battery Life | 3d | 2010-02-25 | 2010-03-01 | 25 |  |  | 69d |  |  | Shawn | 24h |  |
| 34 | 3.2.5 | **Bluetooth** | 8d | 2010-02-05 A | 2010-02-17 |  | 9% | 7.31d | 62.6d |  |  |  | 56h | 4.8h |
| 35 | 3.2.5.1 | Paring | 5d | 2010-02-05 A | 2010-02-12 | 9 | 12% | 4.4d | 60.6d | 0d | start no earlier than 2010-02-02 | Shawn | 40h | 4.8h |
| 36 | 3.2.5.2 | Initiate DUN &/ PAN | 2d | 2010-02-15 | 2010-02-17 | 35 |  |  | 62.6d | 11.6d | start no earlier than 2010-02-02 | Shawn | 16h |  |
| 37 | 3.2.6 | **Camera** | 22d | 2010-02-03 A | 2010-03-04 |  | 93% | 1.65d | 51d | 0d |  |  | 64h | 59.2h |
| 38 | 3.2.6.1 | Setup Device | 5d | 2010-02-03 A | 2010-02-09 A | 11 | 100% |  |  |  | start no earlier than 2010-02-02 | Dan | 40h | 40h |
| 39 | 3.2.6.2 | Read Image | 3d | 2010-03-02 A | 2010-03-04 | 38 | 80% | 0.6d | 51d | 0d |  | Dan | 24h | 19.2h |
| 40 | 3.2.7 | **Device Data Stream** | 15d | 2010-03-05 | 2010-03-25 |  |  |  | 51d |  |  |  | 80h |  |
| 41 | 3.2.7.1 | Transmit Telemetry Steam | 5d | 2010-03-05 | 2010-03-11 | 37 |  |  | 61d |  |  | Dan | 40h |  |
| 42 | 3.2.7.2 | Transmit Image Stream | 5d | 2010-03-19 | 2010-03-25 | 36, 39 |  |  | 51d |  |  | Dan | 40h |  |
| 43 | 4 | **Telemetry Stream** | 27d | 2010-01-04 A | 2010-02-09 |  | 29% | 19.29d | 63.75d |  |  |  | 56h | 16h |
| 44 | 4.1 | Create Stream Protocol | 7d | 2010-01-04 A | 2010-02-09 |  | 29% | 5d | 63.75d | 0d | finish no earlier than 2010-01-12 | John | 56h | 16h |
| 45 | 5 | **Telemetry System** | 31d | 2010-02-10 A | 2010-03-24 |  | 36% | 19.88d | 52d |  |  |  | 184h | 66h |
| 46 | 5.1 | **Telemetry Web Back-End** | 31d | 2010-02-10 A | 2010-03-24 |  | 36% | 19.88d | 52d |  |  |  | 184h | 66h |
| 47 | 5.1.1 | Build Database | 5d | 2010-02-22 A | 2010-02-26 |  | 50% | 2.5d | 52d | 0d | start no earlier than 2010-02-02 | Dan | 40h | 20h |
| 48 | 5.1.2 | **Receive Telemetry Streams** | 27d | 2010-02-10 A | 2010-03-18 |  | 64% | 9.75d | 52d | 0d |  |  | 72h | 46h |
| 49 | 5.1.2.1 | Parse Elements | 5d | 2010-02-10 A | 2010-02-16 | 44 | 75% | 1.25d | 60d | 8d | start no earlier than 2010-02-02 | Dan | 40h | 30h |
| 50 | 5.1.2.2 | Determine Element Time | 2d | 2010-02-17 A | 2010-02-18 A | 49 | 100% |  |  |  | start no earlier than 2010-02-02 | Dan | 16h | 16h |
| 51 | 5.1.2.3 | Store Element Data | 2d | 2010-03-17 | 2010-03-18 | 49, 50, 47 |  |  | 52d |  |  | Dan | 16h |  |

| ID | WBS | Task | Duration | Start | Finish | Predecessors | Complete | Remaining | Total slack | Free slack | Constraint | Resources | Work | Actual work |
| --- | --- | --- | --- | --- | --- | --- | --- | --- | --- | --- | --- | --- | --- | --- |
| 52 | 5.1.3 | **Responces** | 5d | 2010-02-25 | 2010-03-03 |  |  |  | 67d |  |  |  | 40h |  |
| 53 | 5.1.3.1 | Response Abstract Base Class | 3d | 2010-02-25 | 2010-03-01 | 44 |  |  | 67d | 0d | start no earlier than 2010-02-02 | John | 24h |  |
| 54 | 5.1.3.2 | Valid | 2d | 2010-03-02 | 2010-03-03 | 53 |  |  | 67d |  | start no earlier than 2010-02-02 | John | 16h |  |
| 55 | 5.1.4 | Decode Video Frames | 2d | 2010-03-19 | 2010-03-22 | 48 |  |  | 52d | 0d |  | John | 16h |  |
| 56 | 5.1.5 | Store Video Frame | 2d | 2010-03-23 | 2010-03-24 | 55 |  |  | 52d |  |  | John | 16h |  |
| 57 | 6 | **Telemetry Web Front-End** | 19.6d? | 2010-02-17 A | 2010-03-16 |  | 11% | 17.47d? | 58d |  |  |  | 80h | 8h |
| 58 | 6.1 | Create Device Display Page | 2d | 2010-03-09 A | 2010-03-12 | 47 | 50% | 1d | 60d |  |  | Shawn; Dan | 16h | 8h |
| 59 | 6.2 | Create Gauge Abstract Base Class | 2d | 2010-02-17 | 2010-02-19 |  |  |  | 58d | 0d | start no earlier than 2010-02-02 | Shawn; Dan | 16h |  |
| 60 | 6.3 | **Display Telemerty Data** | 16.6d? | 2010-02-22 | 2010-03-16 |  |  |  | 58d |  |  |  | 48h |  |
| 61 | 6.3.1 | Build Compass Gauge | 2d? | 2010-02-22 | 2010-03-01 | 59 |  |  | 69d |  | start no earlier than 2010-02-02 | Shawn; Dan | 16h |  |
| 62 | 6.3.2 | Build Voltage Gauge | 1.6d? | 2010-03-12 | 2010-03-15 | 59 |  |  | 59d |  | start no earlier than 2010-02-02 | Shawn; Dan | 16h |  |
| 63 | 6.3.3 | Build Current Gauge | 1.6d? | 2010-03-15 | 2010-03-16 | 59 |  |  | 58d |  | start no earlier than 2010-02-02 | Shawn; Dan | 16h |  |
