# Velomobile

Schedule from MS Project, 2010-01-04 to 2010-06-07, status date 2010-01-12, A marks actual dates.
Oregon Institute of Technology

## Calendars

- Standard: Mon-Fri 08:00-12:00, 13:00-17:00; Sat-Sun off.

## Resources

| Resource |
| --- |
| Shawn |
| John |
| Dan |

## Schedule

| ID | WBS | Task | Type | Duration | Start | Finish | Predecessors | Complete | Remaining | Total slack | Free slack | Constraint | Resources | Work | Actual work |
| --- | --- | --- | --- | --- | --- | --- | --- | --- | --- | --- | --- | --- | --- | --- | --- |
| 1 | 1 | Spring Term | milestone | 50d? | 2010-03-30 | 2010-06-07 |  |  |  | 0d |  | start no earlier than 2010-03-29 |  |  |  |
| 2 | 2 | **Embedded Controller** |  | 105.25d? | 2010-01-04 A | 2010-05-31 |  | 69% | 32.46d? | 5.75d |  |  |  | 808h | 558.8h |
| 3 | 2.1 | **Build** |  | 81d? | 2010-01-04 A | 2010-04-26 |  | 92% | 6.39d? | 26.25d | 8.25d |  |  | 152h | 140h |
| 4 | 2.1.1 | Research Components |  | 1d | 2010-01-04 A | 2010-01-04 A |  | 100% |  |  |  | start no earlier than 2010-01-04 | Shawn | 8h | 8h |
| 5 | 2.1.2 | Submit Component List for Review |  | 1d? | 2010-01-05 A | 2010-01-05 A | 4 | 100% |  |  |  |  | Shawn | 8h | 8h |
| 6 | 2.1.3 | Aquire Components |  | 7d? | 2010-01-06 A | 2010-02-04 A | 5 | 100% |  |  |  |  | Shawn | 56h | 56h |
| 7 | 2.1.4 | Interface Display |  | 2d | 2010-03-10 A | 2010-04-09 A | 6 | 100% |  |  |  | finish no earlier than 2010-01-15 | Shawn | 16h | 16h |
| 8 | 2.1.5 | Interface Bluetooth |  | 1d | 2010-01-18 A | 2010-01-18 A | 6 | 100% |  |  |  |  | Shawn | 8h | 8h |
| 9 | 2.1.6 | Interface GPS |  | 1d | 2010-03-16 A | 2010-03-17 A | 6 | 100% |  |  |  |  | Shawn | 8h | 8h |
| 10 | 2.1.7 | Interface Camera |  | 1d | 2010-01-15 A | 2010-01-15 A | 6 | 100% |  |  |  |  | Shawn | 8h | 8h |
| 11 | 2.1.8 | Interface Hall Effect |  | 1d | 2010-02-12 A | 2010-02-15 A | 6 | 100% |  |  |  | start no earlier than 2010-02-02 | Shawn | 8h | 8h |
| 12 | 2.1.9 | Interface AttoPilot |  | 1d | 2010-02-04 A | 2010-02-05 A | 6 | 100% |  |  |  | start no earlier than 2010-02-02 | Shawn | 8h | 8h |
| 13 | 2.1.10 | Interface Throttle |  | 1d | 2010-02-18 A | 2010-02-19 A | 6 | 100% |  |  |  | start no earlier than 2010-02-02 | Shawn | 8h | 8h |
| 14 | 2.1.11 | Interface PAS Sensor |  | 1d | 2010-04-23 | 2010-04-23 | 6 |  |  | 27.25d | 1.25d | start no earlier than 2010-03-29 | Shawn | 8h |  |
| 15 | 2.1.12 | Interface Brake Sensor |  | 1d | 2010-04-26 A | 2010-04-26 | 6 | 50% | 0.5d | 25.75d | 0.25d | start no earlier than 2010-03-29 | Shawn | 8h | 4h |
| 16 | 2.2 | **Code** |  | 83.25d | 2010-02-03 A | 2010-05-31 |  | 64% | 30.1d | 5.75d |  |  |  | 656h | 418.8h |
| 17 | 2.2.1 | Embedded Operating System |  | 10d | 2010-05-07 A | 2010-05-21 | 3 | 80% | 2d | 11.75d |  |  | Shawn | 80h | 64h |
| 18 | 2.2.2 | **Sensor Input** |  | 40d | 2010-04-05 A | 2010-05-31 A |  | 100% |  |  |  |  |  | 48h | 48h |
| 19 | 2.2.2.1 | Revolutions |  | 2d | 2010-04-07 A | 2010-04-09 A | 11 | 100% |  |  |  | start no earlier than 2010-03-29 | John | 16h | 16h |
| 20 | 2.2.2.2 | Battery Levels |  | 2d | 2010-04-05 A | 2010-04-07 A | 12 | 100% |  |  |  | start no earlier than 2010-03-29 | John | 16h | 16h |
| 21 | 2.2.2.3 | Throttle Position |  | 2d | 2010-05-27 A | 2010-05-31 A | 13 | 100% |  |  |  | start no earlier than 2010-03-29 | John | 16h | 16h |
| 22 | 2.2.3 | **Calculations** |  | 26d | 2010-04-14 A | 2010-05-20 |  | 31% | 18d | 12.75d |  |  |  | 104h | 32h |
| 23 | 2.2.3.1 | Velocity |  | 3d | 2010-04-22 A | 2010-04-27 A | 19 | 100% |  |  |  | start no earlier than 2010-03-29 | John | 24h | 24h |
| 24 | 2.2.3.2 | RPM |  | 4d | 2010-05-14 A | 2010-05-20 | 19 | 25% | 3d | 12.75d |  | start no earlier than 2010-03-29 | John | 32h | 8h |
| 25 | 2.2.3.3 | Battery Life |  | 6d | 2010-04-14 | 2010-04-22 | 20 |  |  | 30.5d | 2.75d | start no earlier than 2010-03-29 | John | 48h |  |

| ID | WBS | Task | Duration | Start | Finish | Predecessors | Complete | Remaining | Total slack | Free slack | Constraint | Resources | Work | Actual work |
| --- | --- | --- | --- | --- | --- | --- | --- | --- | --- | --- | --- | --- | --- | --- |
| 26 | 2.2.4 | **Power Assist Control** | 13d | 2010-04-27 A | 2010-05-14 |  | 71% | 3.75d | 16.75d |  |  |  | 104h | 74h |
| 27 | 2.2.4.1 | Accelerate | 6d | 2010-05-05 A | 2010-05-13 A | 13, 14 | 100% |  |  |  | start no earlier than 2010-03-29 | John | 48h | 48h |
| 28 | 2.2.4.2 | Decelerate | 2d | 2010-05-04 A | 2010-05-14 A | 15, 14, 13 | 100% |  |  |  | start no earlier than 2010-03-29 | John | 16h | 16h |
| 29 | 2.2.4.3 | Cruise Control | 5d | 2010-04-27 A | 2010-05-04 | 15, 14, 13 | 25% | 3.75d | 24.75d |  | start no earlier than 2010-03-29 | John | 40h | 10h |
| 30 | 2.2.5 | **Embedded Display** | 51.85d | 2010-02-24 A | 2010-05-07 |  | 75% | 12.96d | 21.75d |  |  |  | 72h | 54h |
| 31 | 2.2.5.1 | Display Velocity | 3d | 2010-02-24 A | 2010-05-07 A | 23 | 100% |  |  |  |  | Shawn | 24h | 24h |
| 32 | 2.2.5.2 | Display Battery Level | 3d | 2010-04-30 A | 2010-05-05 A | 20 | 100% |  |  |  | start no earlier than 2010-03-29 | Shawn | 24h | 24h |
| 33 | 2.2.5.3 | Display Battery Life | 3d | 2010-04-27 A | 2010-04-30 | 25 | 25% | 2.25d | 26.4d |  | start no earlier than 2010-03-29 | Shawn | 24h | 6h |
| 34 | 2.2.6 | **Bluetooth** | 54.6d | 2010-02-05 A | 2010-04-22 |  | 64% | 19.85d | 27d |  |  |  | 88h | 56h |
| 35 | 2.2.6.1 | Paring | 7d | 2010-02-05 A | 2010-04-07 A | 8 | 100% |  |  |  | start no earlier than 2010-02-02 | Shawn | 56h | 56h |
| 36 | 2.2.6.2 | Initiate DUN &/ PAN | 4d | 2010-04-19 | 2010-04-22 | 35 |  |  | 27d | 0d | start no earlier than 2010-03-29 | Shawn | 32h |  |
| 37 | 2.2.7 | **Camera** | 22d | 2010-02-03 A | 2010-03-04 A |  | 100% |  |  |  |  |  | 64h | 64h |
| 38 | 2.2.7.1 | Setup Device | 5d | 2010-02-03 A | 2010-02-09 A | 10 | 100% |  |  |  | start no earlier than 2010-02-02 | Shawn | 40h | 40h |
| 39 | 2.2.7.2 | Read Image | 3d | 2010-03-02 A | 2010-03-04 A | 38 | 100% |  |  |  |  | Dan | 24h | 24h |
| 40 | 2.2.8 | **Device Data Stream** | 22.35d | 2010-03-30 A | 2010-04-29 |  | 28% | 16.11d | 27d |  |  |  | 96h | 26.8h |
| 41 | 2.2.8.1 | Transmit Telemetry Steam | 7d | 2010-03-30 A | 2010-04-08 | 37 | 48% | 3.65d | 42.35d |  | start no earlier than 2010-03-29 | Dan | 56h | 26.8h |
| 42 | 2.2.8.2 | Transmit Image Stream | 5d | 2010-04-23 | 2010-04-29 | 36, 39 |  |  | 27d |  | start no earlier than 2010-03-29 | Dan | 40h |  |
| 43 | 3 | **Telemetry Stream** | 27d | 2010-01-04 A | 2010-02-09 A |  | 100% |  |  |  |  |  | 56h | 56h |
| 44 | 3.1 | Create Stream Protocol | 7d | 2010-01-04 A | 2010-02-09 A |  | 100% |  |  |  | finish no earlier than 2010-01-12 | John | 56h | 56h |
| 45 | 4 | **Telemetry System** | 76.25d | 2010-02-10 A | 2010-05-27 |  | 69% | 24d | 7.75d |  |  |  | 216h | 148h |
| 46 | 4.1 | **Telemetry Web Back-End** | 76.25d | 2010-02-10 A | 2010-05-27 |  | 69% | 24d | 7.75d |  |  |  | 216h | 148h |
| 47 | 4.1.1 | Build Database | 5d | 2010-02-22 A | 2010-02-26 A |  | 100% |  |  |  | start no earlier than 2010-02-02 | Dan | 40h | 40h |
| 48 | 4.1.2 | **Receive Telemetry Streams** | 32d | 2010-02-10 A | 2010-03-25 A |  | 100% |  |  |  |  |  | 72h | 72h |
| 49 | 4.1.2.1 | Parse Elements | 5d | 2010-02-10 A | 2010-02-16 A | 44 | 100% |  |  |  | start no earlier than 2010-02-02 | Dan | 40h | 40h |
| 50 | 4.1.2.2 | Determine Element Time | 2d | 2010-02-17 A | 2010-02-18 A | 49 | 100% |  |  |  | start no earlier than 2010-02-02 | Dan | 16h | 16h |
| 51 | 4.1.2.3 | Store Element Data | 2d | 2010-03-24 A | 2010-03-25 A | 49, 50, 47 | 100% |  |  |  |  | Dan | 16h | 16h |

| ID | WBS | Task | Duration | Start | Finish | Predecessors | Complete | Remaining | Total slack | Free slack | Constraint | Resources | Work | Actual work |
| --- | --- | --- | --- | --- | --- | --- | --- | --- | --- | --- | --- | --- | --- | --- |
| 52 | 4.1.3 | **Responces** | 64.25d | 2010-02-23 A | 2010-05-24 |  | 64% | 22.95d | 10.75d |  |  |  | 56h | 36h |
| 53 | 4.1.3.1 | Response Abstract Base Class | 5d | 2010-02-23 A | 2010-04-05 | 44 | 90% | 0.5d | 10.75d | 0d | start no earlier than 2010-02-02 | John | 40h | 36h |
| 54 | 4.1.3.2 | Valid | 2d | 2010-05-20 | 2010-05-24 | 53 |  |  | 10.75d |  | start no earlier than 2010-03-29 | John | 16h |  |
| 55 | 4.1.4 | Decode Video Frames | 3d | 2010-04-09 | 2010-04-14 | 48 |  |  | 7.75d | 0d | start no earlier than 2010-03-29 | John | 24h |  |
| 56 | 4.1.5 | Store Video Frame | 3d | 2010-05-24 | 2010-05-27 | 55 |  |  | 7.75d |  |  | John | 24h |  |
| 57 | 5 | **Telemetry Web Front-End** | 73.6d? | 2010-02-17 A | 2010-05-31 |  | 33% | 49.44d? | 5d |  |  |  | 230.8h | 76h |
| 58 | 5.1 | Create Device Display Page | 1d | 2010-03-09 A | 2010-03-30 | 47 | 75% | 0.25d | 49.75d |  |  | Shawn; Dan | 16h | 12h |
| 59 | 5.2 | Create Gauge Abstract Base Class | 2d | 2010-02-17 A | 2010-03-30 |  | 80% | 0.4d | 45.85d | 7.25d | start no earlier than 2010-02-02 | Shawn; Dan | 16h | 12.8h |
| 60 | 5.3 | **Display Telemerty Data** | 6.35d? | 2010-04-08 A | 2010-04-16 |  | 18% | 5.23d? | 36d |  |  |  | 70.8h | 11.2h |
| 61 | 5.3.1 | Build Compass Gauge | 1.5d? | 2010-04-08 A | 2010-04-12 | 59 | 23% | 1.15d? | 40.85d |  | start no earlier than 2010-03-29 | Shawn; Dan | 16h | 2.8h |
| 62 | 5.3.2 | Build Voltage Gauge | 1.5d? | 2010-04-09 A | 2010-04-13 | 59 | 23% | 1.15d? | 39.85d |  | start no earlier than 2010-03-29 | Shawn; Dan | 16h | 2.8h |
| 63 | 5.3.3 | Build Current Gauge | 4.35d? | 2010-04-12 A | 2010-04-16 | 59 | 14% | 3.75d? | 36d |  | start no earlier than 2010-03-29 | Shawn; Dan | 38.8h | 5.6h |
| 64 | 5.4 | **Management Page** | 13d | 2010-05-10 A | 2010-05-26 |  | 38% | 8d | 8d |  |  |  | 104h | 40h |
| 65 | 5.4.1 | Create Security | 5d | 2010-05-17 | 2010-05-21 |  |  |  | 11d |  | start no earlier than 2010-05-17 | Dan | 40h |  |
| 66 | 5.4.2 | Create Page | 5d | 2010-05-10 A | 2010-05-14 A |  | 100% |  |  |  | start no earlier than 2010-05-10 | Dan | 40h | 40h |
| 67 | 5.4.3 | Store Data | 3d | 2010-05-24 | 2010-05-26 |  |  |  | 8d |  | start no earlier than 2010-05-24 | Dan | 24h |  |
| 68 | 5.5 | **Windowing Outsourcing** | 3d? | 2010-05-27 | 2010-05-31 |  |  |  | 5d |  |  |  | 24h |  |
| 69 | 5.5.1 | Integrate Source Code | 3d? | 2010-05-27 | 2010-05-31 |  |  |  | 5d |  | start no earlier than 2010-05-24 | Dan | 24h |  |
